# Seznam činností

Schedule from MS Project, 2023-03-08 to 2023-05-02, status date 2023-03-18, costs in Kč, A marks actual dates.

## Calendars

- Standardní: Mon-Fri 09:00-13:00, 14:00-18:00; Sat-Sun off. Exceptions (off unless hours are given): 2023-04-10 (Velikonoční pondělí), 2023-05-01 09:00-13:00, 14:00-18:00.

## Resources

| Resource | Group | Rate |
| --- | --- | --- |
| Mihálová Veronika | Management | 300 |
| Cibulková Magda | Management | 300 |
| Kaplan Miloslav | Management | 300 |
| Kmenta Martin | DEV | 300 |
| Knopp Lubomír | Management | 300 |
| Kulíšek Vojtěch | DEV | 300 |
| Šesták Pavel | DEV | 300 |
| Štěpánek Miroslav | DEV | 300 |
| Zlevorová Martina | DEV | 300 |

## Schedule

| ID | WBS | Task | Type | Duration | Start | Finish | Predecessors | Complete | Remaining | Total slack | Free slack | Constraint | Resources | Work | Actual work | Cost | Actual cost |
| --- | --- | --- | --- | --- | --- | --- | --- | --- | --- | --- | --- | --- | --- | --- | --- | --- | --- |
| 1 | 1 | **Přípravná fáze** |  | 3.25d | 2023-03-08 09:00 A | 2023-03-13 11:00 |  | 67% | 1.08d | 34.78d |  |  |  | 40h | 36h | 12,000 | 10,800 |
| 2 | 1.1 | Tvorba týmu |  | 0.5h | 2023-03-08 09:00 A | 2023-03-08 09:30 A |  | 100% |  |  |  |  | Cibulková Magda; Kaplan Miloslav; Kmenta Martin; Knopp Lubomír; Kulíšek Vojtěch; Mihálová Veronika; Šesták Pavel; Štěpánek Miroslav; Zlevorová Martina | 4.5h | 4.5h | 1,350 | 1,350 |
| 3 | 1.2 | Rozdělení rolí v týmu |  | 0.5h | 2023-03-08 09:00 A | 2023-03-08 09:30 A | 2FS+1d | 100% |  |  |  |  | Cibulková Magda; Kaplan Miloslav; Kmenta Martin; Knopp Lubomír; Kulíšek Vojtěch; Mihálová Veronika; Šesták Pavel; Štěpánek Miroslav; Zlevorová Martina | 4.5h | 4.5h | 1,350 | 1,350 |
| 4 | 1.3 | Přidělení zodopovědnosti za jednotlivé fáze projektu |  | 0.5h | 2023-03-08 09:00 A | 2023-03-08 09:30 A | 3 | 100% |  |  |  |  | Cibulková Magda; Kaplan Miloslav; Kmenta Martin; Knopp Lubomír; Kulíšek Vojtěch; Mihálová Veronika; Šesták Pavel; Štěpánek Miroslav; Zlevorová Martina | 4.5h | 4.5h | 1,350 | 1,350 |
| 5 | 1.4 | Volba komunikačního kanálu |  | 0.25h | 2023-03-08 09:00 A | 2023-03-08 09:15 A | 4 | 100% |  |  |  |  | Cibulková Magda; Kaplan Miloslav; Kmenta Martin; Knopp Lubomír; Kulíšek Vojtěch; Mihálová Veronika; Šesták Pavel; Štěpánek Miroslav; Zlevorová Martina | 2.25h | 2.25h | 675 | 675 |
| 6 | 1.5 | Stanovení společného úložiště |  | 0.25h | 2023-03-08 09:00 A | 2023-03-08 09:15 A | 5 | 100% |  |  |  |  | Cibulková Magda; Kaplan Miloslav; Kmenta Martin; Knopp Lubomír; Kulíšek Vojtěch; Mihálová Veronika; Šesták Pavel; Štěpánek Miroslav; Zlevorová Martina | 2.25h | 2.25h | 675 | 675 |
| 7 | 1.6 | Dohodnutí harmonogramu týmu |  | 2h | 2023-03-08 09:00 A | 2023-03-08 11:00 A | 6 | 100% |  |  |  |  | Cibulková Magda; Kaplan Miloslav; Kmenta Martin; Knopp Lubomír; Kulíšek Vojtěch; Mihálová Veronika; Šesták Pavel; Štěpánek Miroslav; Zlevorová Martina | 18h | 18h | 5,400 | 5,400 |
| 8 | 1.7 | Tvorba dokumentu |  | 2h | 2023-03-11 08:00 A | 2023-03-13 11:00 | 2, 3, 4, 5, 6, 7 |  | 2h | 34.78d |  |  | Mihálová Veronika; Šesták Pavel | 4h |  | 1,200 |  |
| 9 | 1.8 | Ukončení fáze 1 - Milník 1 | milestone | 0d | 2023-03-11 08:00 A | 2023-03-11 08:00 A | 8 | 100% |  |  |  |  |  |  |  |  |  |
| 10 | 2 | **Analýza** |  | 7.7d | 2023-03-20 09:00 A | 2023-03-29 15:38 | 9 | 46% | 4.13d | 0.12d |  |  |  | 195.48h | 75.69h | 58,645 | 22,708.5 |
| 11 | 2.1 | **Konzultace se zákazníkem** |  | 1.55d | 2023-03-20 09:00 A | 2023-03-21 14:23 A | 9 | 100% |  |  |  |  | Mihálová Veronika; Šesták Pavel | 14.38h | 14.38h | 4,315 | 4,315 |
| 12 | 2.1.1 | Získávání požadavků |  | 2h | 2023-03-20 09:00 A | 2023-03-20 11:00 A | 9 | 100% |  |  |  | finish no earlier than 2023-03-14 17:00 | Mihálová Veronika; Šesták Pavel | 4h | 4h | 1,200 | 1,200 |
| 13 | 2.1.2 | Tvorba use case diagramu |  | 8.38h | 2023-03-20 11:00 A | 2023-03-21 11:23 A | 12 | 100% |  |  |  | finish no earlier than 2023-03-15 17:00 | Šesták Pavel | 8.38h | 8.38h | 2,515 | 2,515 |
| 14 | 2.1.3 | Tvorba SSD |  | 2h | 2023-03-21 11:23 A | 2023-03-21 14:23 A | 13 | 100% |  |  |  |  | Šesták Pavel | 2h | 2h | 600 | 600 |
| 15 | 2.2 | Semi formalizace zadání |  | 2h | 2023-03-21 14:23 A | 2023-03-21 16:23 A | 11 | 100% |  |  |  |  | Šesták Pavel | 2h | 2h | 600 | 600 |
| 16 | 2.3 | **Finalizace zadání** |  | 0.53d | 2023-03-21 16:23 A | 2023-03-22 11:38 A | 15 | 100% |  |  |  |  | Šesták Pavel | 11.75h | 11.75h | 3,525 | 3,525 |
| 17 | 2.3.1 | Prezentace |  | 2h | 2023-03-21 16:23 A | 2023-03-22 09:23 A | 14 | 100% |  |  |  |  | Mihálová Veronika; Šesták Pavel | 4h | 4h | 1,200 | 1,200 |
| 18 | 2.3.2 | Důkladné vysvětlení zadání klientovi |  | 1h | 2023-03-22 09:23 A | 2023-03-22 10:23 A | 17 | 100% |  |  |  |  | Šesták Pavel | 1h | 1h | 300 | 300 |
| 19 | 2.3.3 | Shodnutí na zadání |  | 1h | 2023-03-22 10:23 A | 2023-03-22 11:23 A | 18 | 100% |  |  |  |  | Mihálová Veronika; Šesták Pavel | 2h | 2h | 600 | 600 |
| 20 | 2.3.4 | Podpis klienta |  | 0.25h | 2023-03-22 11:23 A | 2023-03-22 11:38 A | 19 | 100% |  |  |  |  | Mihálová Veronika; Šesták Pavel | 0.5h | 0.5h | 150 | 150 |
| 21 | 2.4 | **Analýza trhu** |  | 6.16d | 2023-03-21 14:23 A | 2023-03-29 15:38 | 14 | 25% | 4.62d | 0.12d | 0d |  |  | 30h | 7.5h | 9,000 | 2,250 |
| 22 | 2.4.1 | Nalezení podobných hotových řešení podle specifikace klienta, nutné zvážit všechny faktory |  | 12h | 2023-03-28 10:38 A | 2023-03-29 15:38 | 20 | 25% | 9h | 0.12d |  | start no earlier than 2023-03-28 10:38 | Cibulková Magda; Kaplan Miloslav | 24h | 6h | 7,200 | 1,800 |
| 23 | 2.4.2 | Výpočet, zda naše odhadované úsilí nebude dražší než nákup hotového |  | 2h | 2023-03-21 14:23 A | 2023-03-21 16:23 | 11 | 25% | 1.5h | 6.03d |  |  | Cibulková Magda; Kaplan Miloslav | 4h | 1h | 1,200 | 300 |
| 24 | 2.4.3 | Tvorba finální zprávy |  | 1h | 2023-03-21 14:23 A | 2023-03-21 15:23 | 11 | 25% | 0.75h | 6.16d |  |  | Cibulková Magda; Kaplan Miloslav | 2h | 0.5h | 600 | 150 |

| ID | WBS | Task | Type | Duration | Start | Finish | Predecessors | Complete | Remaining | Total slack | Free slack | Constraint | Resources | Work | Actual work | Cost | Actual cost |
| --- | --- | --- | --- | --- | --- | --- | --- | --- | --- | --- | --- | --- | --- | --- | --- | --- | --- |
| 25 | 2.5 | **Studie providitelnosti** |  | 0.44d | 2023-03-23 09:00 A | 2023-03-23 12:30 | 16 | 50% | 0.22d | 4.39d | 4.27d |  | Kmenta Martin | 7h | 3.5h | 2,100 | 1,050 |
| 26 | 2.5.1 | Dostupné technologie |  | 1.5h | 2023-03-23 09:00 A | 2023-03-23 10:30 A |  | 100% |  |  |  | start no earlier than 2023-03-23 08:00 | Kmenta Martin | 1.5h | 1.5h | 450 | 450 |
| 27 | 2.5.2 | Tvorba prototypu |  | 2h | 2023-03-23 10:30 A | 2023-03-23 12:30 | 26 | 13% | 1.75h | 4.39d |  |  | Kmenta Martin | 2h | 0.25h | 600 | 75 |
| 28 | 2.6 | Analýza rizik |  | 27.37h | 2023-03-22 12:38 A | 2023-03-27 17:00 | 16 | 32% | 18.52h | 1.95d | 1.83d | finish no earlier than 2023-03-27 17:00 | Cibulková Magda; Kaplan Miloslav; Knopp Lubomír; Mihálová Veronika | 104.1h | 30h | 31,230 | 9,000 |
| 29 | 2.7 | Tvorba akceptačních testů |  | 12h | 2023-03-22 11:38 A | 2023-03-23 16:38 | 16 | 25% | 9h | 0.03d | 0d |  | Kulíšek Vojtěch; Zlevorová Martina | 24h | 6h | 7,200 | 1,800 |
| 30 | 2.8 | Zákazník potvrdí akceptační testy |  | 1h | 2023-03-23 16:38 A | 2023-03-23 17:38 | 29 | 25% | 0.75h | 0.03d | 0d |  | Šesták Pavel | 1h | 0.25h | 300 | 75 |
| 31 | 2.9 | Potvrzení smlouvy všemi zainteresovanými stranami |  | 1h | 2023-03-23 17:38 A | 2023-03-24 09:38 | 30 | 25% | 0.75h | 0.01d | 0d |  | Šesták Pavel | 1h | 0.25h | 300 | 75 |
| 32 | 2.10 | Podpis smlouvy |  | 0.25h | 2023-03-24 09:38 A | 2023-03-24 09:53 | 31 | 25% | 0.19h | 3.72d | 3.59d |  | Šesták Pavel | 0.25h | 0.06h | 75 | 18.5 |
| 33 | 2.11 | Ukončení fáze 2-Milník 2 | milestone | 0d | 2023-03-29 15:38 | 2023-03-29 15:38 | 11, 15, 16, 21, 25, 28, 29, 30, 31, 32 |  |  | 0.12d |  | finish no earlier than 2023-03-28 17:00 |  |  |  |  |  |
| 34 | 3 | **Návrh** |  | 7.05d | 2023-03-29 16:38 A | 2023-04-07 17:00 | 10 | 19% | 5.71d | 0.06d | 0d |  |  | 141h | 11.75h | 42,300 | 3,525 |
| 35 | 3.1 | Domain model |  | 1h | 2023-03-29 16:38 A | 2023-03-29 17:38 A | 33 | 100% |  |  |  |  | Kmenta Martin | 1h | 1h | 300 | 300 |
| 36 | 3.2 | Schůzka s budoucími uživateli |  | 2h | 2023-03-29 16:38 A | 2023-03-30 09:38 | 32 | 75% | 0.5h | 6.48d | 6.42d |  | Kmenta Martin; Šesták Pavel | 4h | 3h | 1,200 | 900 |
| 37 | 3.3 | Volba technologií |  | 4h | 2023-03-30 09:08 A | 2023-03-31 11:00 A | 32 | 100% |  |  |  | start no earlier than 2023-03-30 09:08 | Kmenta Martin; Štěpánek Miroslav | 4h | 4h | 1,200 | 1,200 |
| 38 | 3.4 | Návrh architektury systému |  | 5h | 2023-03-31 11:00 A | 2023-03-31 17:00 | 37 | 75% | 1.25h | 2.44d | 1.38d |  | Šesták Pavel | 5h | 3.75h | 1,500 | 1,125 |
| 39 | 3.5 | Zvolíme přístup vývoje řízení |  | 10h | 2023-03-31 11:00 | 2023-04-03 15:00 | 37 |  |  | 1.06d | 0d | start no earlier than 2023-03-31 11:00 | Kmenta Martin; Kulíšek Vojtěch; Šesták Pavel; Štěpánek Miroslav; Zlevorová Martina | 25h |  | 7,500 |  |
| 40 | 3.6 | Zvolíme metodiku vývoje |  | 5h | 2023-04-03 15:00 | 2023-04-04 11:00 | 39 |  |  | 1.06d | 0d |  | Kmenta Martin; Kulíšek Vojtěch; Šesták Pavel; Štěpánek Miroslav; Zlevorová Martina | 25h |  | 7,500 |  |
| 41 | 3.7 | Potvrzení návrhu týmem |  | 10h | 2023-04-04 11:00 | 2023-04-05 13:00 | 40, 35, 38 |  |  | 1.06d | 0d |  | Kmenta Martin; Kulíšek Vojtěch; Šesták Pavel; Štěpánek Miroslav; Zlevorová Martina | 50h |  | 15,000 |  |
| 42 | 3.8 | **Oponentura** |  | 2d | 2023-04-05 14:00 | 2023-04-07 13:00 | 41 |  |  | 0.06d | 0d |  |  | 15h |  | 4,500 |  |
| 43 | 3.8.1 | Příprava podkladů pro oponenturu |  | 8h | 2023-04-05 14:00 | 2023-04-06 13:00 | 41 |  |  | 1.06d |  | start no earlier than 2023-04-05 14:00 | Šesták Pavel | 8h |  | 2,400 |  |
| 44 | 3.8.2 | Úprava návrhu na základě konzultace |  | 5h | 2023-04-06 16:00 | 2023-04-07 12:00 | 41 |  |  | 0.06d | 0d | start no earlier than 2023-04-06 16:00 | Šesták Pavel | 5h |  | 1,500 |  |
| 45 | 3.8.3 | Odsouhlasení finální podoby se zákazníkem |  | 1h | 2023-04-07 12:00 | 2023-04-07 13:00 | 44 |  |  | 0.06d |  |  | Kmenta Martin; Šesták Pavel | 2h |  | 600 |  |
| 46 | 3.9 | Tvorba dokumentu |  | 3h | 2023-04-07 14:00 | 2023-04-07 17:00 | 35, 36, 37, 38, 39, 40, 41, 42 |  |  | 0.06d | 0d |  | Cibulková Magda; Kaplan Miloslav; Knopp Lubomír; Mihálová Veronika | 12h |  | 3,600 |  |
| 47 | 3.10 | Ukončení fáze 3-Milník 3 | milestone | 0d | 2023-04-07 17:00 | 2023-04-07 17:00 | 46 |  |  | 0.06d | 0d |  |  |  |  |  |  |
| 48 | 4 | **Implementace** |  | 9.62d | 2023-04-07 17:00 | 2023-04-24 13:00 | 34 |  |  | 0d |  |  |  | 229.5h |  | 68,850 |  |
| 49 | 4.1 | Školení členů technického týmu na zvolené technologie |  | 2h | 2023-04-07 17:00 | 2023-04-11 10:00 | 47 |  |  | 0.06d | 0d | finish no earlier than 2023-04-07 17:00 | Kmenta Martin; Kulíšek Vojtěch; Šesták Pavel; Štěpánek Miroslav; Zlevorová Martina | 10h |  | 3,000 |  |
| 50 | 4.2 | Založení projektu |  | 3h | 2023-04-11 10:00 | 2023-04-11 13:00 | 49 |  |  | 0.06d | 0d |  | Kmenta Martin; Šesták Pavel; Štěpánek Miroslav | 9h |  | 2,700 |  |
| 51 | 4.3 | Nastavení CI/CD |  | 3h | 2023-04-11 14:00 | 2023-04-11 17:00 | 50 |  |  | 0.06d | 0d |  | Šesták Pavel; Štěpánek Miroslav | 6h |  | 1,800 |  |
| 52 | 4.4 | Instalace služeb pro mikroslužby |  | 4h | 2023-04-11 17:00 | 2023-04-12 12:00 | 51 |  |  | 0.06d | 0d |  | Kulíšek Vojtěch; Šesták Pavel | 8h |  | 2,400 |  |
| 53 | 4.5 | Konfigurace běhových prostředí |  | 1d | 2023-04-12 12:00 | 2023-04-13 12:00 | 52 |  |  | 0.06d | 0d |  | Kulíšek Vojtěch; Šesták Pavel | 16h |  | 4,800 |  |
| 54 | 4.6 | Rozdělení rolí podle použité metodiky |  | 3h | 2023-04-13 12:00 | 2023-04-13 16:00 | 53 |  |  | 0.06d | 0d |  | Kulíšek Vojtěch; Kmenta Martin; Šesták Pavel; Štěpánek Miroslav; Zlevorová Martina | 15h |  | 4,500 |  |

| ID | WBS | Task | Type | Duration | Start | Finish | Predecessors | Total slack | Free slack | Constraint | Resources | Work | Cost |
| --- | --- | --- | --- | --- | --- | --- | --- | --- | --- | --- | --- | --- | --- |
| 55 | 4.7 | **Implementace řešení** |  | 6.62d | 2023-04-13 16:00 | 2023-04-24 12:00 | 54 | 0d |  |  |  | 139.5h | 41,850 |
| 56 | 4.7.1 | Schůzka IT týmu |  | 5h | 2023-04-13 16:00 | 2023-04-14 12:00 | 54 | 6d |  |  | Kmenta Martin; Kulíšek Vojtěch; Šesták Pavel; Štěpánek Miroslav; Zlevorová Martina | 15h | 4,500 |
| 57 | 4.7.2 | Rozplánování dané iterace, rozdělení práce |  | 5h | 2023-04-13 16:00 | 2023-04-14 12:00 | 54 | 0.06d | 0d |  | Kmenta Martin; Kulíšek Vojtěch; Šesták Pavel; Štěpánek Miroslav; Zlevorová Martina | 10h | 3,000 |
| 58 | 4.7.3 | Implementace |  | 13h | 2023-04-14 12:00 | 2023-04-18 10:00 | 57 | 0.06d |  | finish no earlier than 2023-04-17 17:00 | Kmenta Martin; Kulíšek Vojtěch; Šesták Pavel; Štěpánek Miroslav; Zlevorová Martina | 31h | 9,300 |
| 59 | 4.7.4 | Tvorba automatických unit a integračních testů |  | 16.5h | 2023-04-18 10:30 | 2023-04-20 11:00 | 58 | 0d |  | start no earlier than 2023-04-18 10:30 | Kmenta Martin; Kulíšek Vojtěch; Šesták Pavel; Štěpánek Miroslav; Zlevorová Martina | 50h | 15,000 |
| 60 | 4.7.5 | Nasazení nových verzí mikroslužeb pomocí CI/CD - integrace |  | 2h | 2023-04-20 11:00 | 2023-04-20 14:30 | 59 | 0d |  |  | Kmenta Martin; Kulíšek Vojtěch; Šesták Pavel; Štěpánek Miroslav; Zlevorová Martina | 5h | 1,500 |
| 61 | 4.7.6 | Zhodnocení iterace |  | 1.5h | 2023-04-20 14:30 | 2023-04-20 16:00 | 60 | 0d |  |  | Kmenta Martin; Kulíšek Vojtěch; Šesták Pavel; Štěpánek Miroslav; Zlevorová Martina | 7.5h | 2,250 |
| 62 | 4.7.7 | Průběžná tvorba prográmatorské dokumentace |  | 6.5h | 2023-04-20 16:00 | 2023-04-21 17:00 | 61 | 0d |  | finish no earlier than 2023-04-21 17:00 | Kmenta Martin; Kulíšek Vojtěch; Šesták Pavel; Štěpánek Miroslav; Zlevorová Martina | 20h | 6,000 |
| 63 | 4.7.8 | Kontrola plánu |  | 1h | 2023-04-21 17:00 | 2023-04-24 12:00 | 62 | 0d |  | finish no earlier than 2023-04-21 17:00 | Kmenta Martin; Kulíšek Vojtěch; Šesták Pavel; Štěpánek Miroslav; Zlevorová Martina | 1h | 300 |
| 64 | 4.8 | Sebereflexivní meeting programátorů |  | 8h | 2023-04-14 15:00 | 2023-04-17 15:00 | 57 | 4.75d |  | start no earlier than 2023-04-14 15:00 | Kmenta Martin; Kulíšek Vojtěch; Šesták Pavel; Štěpánek Miroslav; Zlevorová Martina | 25h | 7,500 |
| 65 | 4.9 | Tvorba dokumentu |  | 1h | 2023-04-24 12:00 | 2023-04-24 13:00 | 49, 50, 51, 52, 53, 54, 55, 64 | 0d |  |  | Šesták Pavel | 1h | 300 |
| 66 | 4.10 | Ukončení fáze 4-Milník 4 | milestone | 0d | 2023-04-24 13:00 | 2023-04-24 13:00 | 65 | 0d |  |  |  |  |  |
| 67 | 5 | **Testování** |  | 2.62d | 2023-04-24 14:00 | 2023-04-27 10:00 | 48 | 0d |  |  |  | 105h | 31,500 |
| 68 | 5.1 | Systémové testy |  | 4h | 2023-04-24 14:00 | 2023-04-24 18:00 | 66 | 0d |  |  | Knopp Lubomír; Kulíšek Vojtěch; Mihálová Veronika; Šesták Pavel | 16h | 4,800 |
| 69 | 5.2 | Performance testy |  | 1h | 2023-04-24 14:00 | 2023-04-24 15:00 | 66 | 0.38d |  |  | Knopp Lubomír; Kulíšek Vojtěch; Mihálová Veronika; Šesták Pavel | 4h | 1,200 |
| 70 | 5.3 | Vytváření metodiky pro manuální testování klientské částí systému |  | 4h | 2023-04-25 09:00 | 2023-04-25 13:00 | 68, 69 | 0d |  |  | Kmenta Martin; Kulíšek Vojtěch; Šesták Pavel; Štěpánek Miroslav; Zlevorová Martina | 20h | 6,000 |
| 71 | 5.4 | Manuální testování klientské části |  | 12h | 2023-04-25 14:00 | 2023-04-26 18:00 | 70 | 0d |  |  | Kmenta Martin; Kulíšek Vojtěch; Šesták Pavel; Štěpánek Miroslav; Zlevorová Martina | 60h | 18,000 |
| 72 | 5.5 | Tvorba dokumentu |  | 1h | 2023-04-27 09:00 | 2023-04-27 10:00 | 68, 69, 70, 71 | 0d |  |  | Kmenta Martin; Kulíšek Vojtěch; Šesták Pavel; Štěpánek Miroslav; Zlevorová Martina | 5h | 1,500 |
| 73 | 5.6 | Ukončení fáze 5-Milník 5 | milestone | 0d | 2023-04-27 10:00 | 2023-04-27 10:00 | 72 | 0d |  |  |  |  |  |
| 74 | 6 | **Nasazení** |  | 1.38d | 2023-04-27 10:00 | 2023-04-28 13:00 | 67 | 0d |  |  |  | 11h | 3,300 |
| 75 | 6.1 | Tvorba uživatelský příručky s korekturou |  | 1d | 2023-04-27 10:00 | 2023-04-28 10:00 | 73 | 0d |  |  | Kulíšek Vojtěch | 8h | 2,400 |
| 76 | 6.2 | Školení uživatelů |  | 2h | 2023-04-28 10:00 | 2023-04-28 12:00 | 75 | 0d |  |  | Šesták Pavel | 2h | 600 |
| 77 | 6.3 | Tvorba dokumentu |  | 1h | 2023-04-28 12:00 | 2023-04-28 13:00 | 75, 76 | 0d |  |  | Kulíšek Vojtěch | 1h | 300 |
| 78 | 6.4 | Ukončení fáze 6-Milník 6 | milestone | 0d | 2023-04-28 13:00 | 2023-04-28 13:00 | 77 | 0d |  |  |  |  |  |

| ID | WBS | Task | Type | Duration | Start | Finish | Predecessors | Total slack | Free slack | Constraint | Resources | Work | Cost |
| --- | --- | --- | --- | --- | --- | --- | --- | --- | --- | --- | --- | --- | --- |
| 79 | 7 | **Předání zákazníkovi** |  | 0.44d | 2023-04-28 14:00 | 2023-04-28 17:30 | 74 | 0d |  |  |  | 4.5h | 1,350 |
| 80 | 7.1 | Akceptační testy |  | 2h | 2023-04-28 14:00 | 2023-04-28 16:00 | 78 | 0d |  |  | Kmenta Martin | 2h | 600 |
| 81 | 7.2 | **Odevzdání řešení zákazníkovi** |  | 0.06d | 2023-04-28 16:00 | 2023-04-28 16:30 | 80 | 0d |  |  | Šesták Pavel | 1.5h | 450 |
| 82 | 7.2.1 | Zdrojové kody |  | 0.5h | 2023-04-28 16:00 | 2023-04-28 16:30 | 80 | 0d |  |  | Šesták Pavel | 0.5h | 150 |
| 83 | 7.2.2 | Dokumentace |  | 0.5h | 2023-04-28 16:00 | 2023-04-28 16:30 | 80 | 0d |  |  | Šesták Pavel | 0.5h | 150 |
| 84 | 7.3 | Tvorba dokumentu |  | 1h | 2023-04-28 16:30 | 2023-04-28 17:30 | 80, 81 | 0d |  |  | Kmenta Martin | 1h | 300 |
| 85 | 7.4 | Ukončení fáze 7-Milník 7 | milestone | 0d | 2023-04-28 17:30 | 2023-04-28 17:30 | 84 | 0d |  |  |  |  |  |
| 86 | 8 | **Finalizace projektu** |  | 1.09d | 2023-04-28 17:30 | 2023-05-02 09:15 | 79 | 0d |  |  |  | 62.63h | 18,790 |
| 87 | 8.1 | Zhodnocení odhadu plánu projektu z první části |  | 6h | 2023-04-28 17:30 | 2023-05-01 15:30 | 85 | 0d |  |  | Mihálová Veronika | 6h | 1,800 |
| 88 | 8.2 | Rozšíření firemní know-how báze - poučení z chyb |  | 2.13h | 2023-05-01 15:30 | 2023-05-01 18:00 | 87 | 0d |  | finish no earlier than 2023-04-28 17:00 | Cibulková Magda; Kaplan Miloslav; Kmenta Martin; Knopp Lubomír; Kulíšek Vojtěch; Mihálová Veronika; Šesták Pavel; Štěpánek Miroslav; Zlevorová Martina | 16.13h | 4,840 |
| 89 | 8.3 | Zhodnocení spolupráce členů týmu a rozdělení prémií |  | 0.25h | 2023-05-02 09:00 | 2023-05-02 09:15 | 88 | 0d |  |  | Mihálová Veronika | 0.25h | 75 |
| 90 | 8.4 | Odevzdání kompletního projektu do IS VUT |  | 0.25h | 2023-04-28 17:30 | 2023-04-28 17:45 | 85 | 1.06d |  | finish no earlier than 2023-04-27 17:00 | Mihálová Veronika | 0.25h | 75 |
| 91 | 8.5 | Prezentace projektu |  | 5h | 2023-04-28 17:30 | 2023-05-01 17:52 | 85 | 0.05d | 0d | finish no earlier than 2023-04-28 17:00 | Cibulková Magda; Kaplan Miloslav; Kmenta Martin; Knopp Lubomír; Kulíšek Vojtěch; Mihálová Veronika; Šesták Pavel; Štěpánek Miroslav; Zlevorová Martina | 40h | 12,000 |
| 92 | 8.6 | Ukončení fáze 8-Milník 8 | milestone | 0d | 2023-05-01 17:52 | 2023-05-01 17:52 | 91 | 0.05d |  | finish no earlier than 2023-05-01 17:00 |  |  |  |
| 93 | 9 | **MS project aktualizace** |  | 30d | 2023-03-14 09:00 | 2023-04-25 18:00 |  | 4.03d |  |  |  | 56h | 16,800 |
| 94 | 9.1 | MS project aktualizace 1 |  | 1d | 2023-03-14 09:00 | 2023-03-14 18:00 |  | 33.03d |  | start no earlier than 2023-03-14 08:00 | Knopp Lubomír | 8h | 2,400 |
| 95 | 9.2 | MS project aktualizace 2 |  | 1d | 2023-03-21 09:00 | 2023-03-21 18:00 |  | 28.03d |  | start no earlier than 2023-03-21 08:00 | Knopp Lubomír | 8h | 2,400 |
| 96 | 9.3 | MS project aktualizace 3 |  | 1d | 2023-03-28 09:00 | 2023-03-28 18:00 |  | 23.03d |  | start no earlier than 2023-03-28 08:00 | Knopp Lubomír | 8h | 2,400 |
| 97 | 9.4 | MS project aktualizace 4 |  | 1d | 2023-04-04 09:00 | 2023-04-04 18:00 |  | 18.03d |  | start no earlier than 2023-04-04 08:00 | Knopp Lubomír | 8h | 2,400 |
| 98 | 9.5 | MS project aktualizace 5 |  | 1d | 2023-04-11 09:00 | 2023-04-11 18:00 |  | 14.03d |  | start no earlier than 2023-04-11 08:00 | Knopp Lubomír | 8h | 2,400 |
| 99 | 9.6 | MS project aktualizace 6 |  | 1d | 2023-04-18 09:00 | 2023-04-18 18:00 |  | 9.03d |  | start no earlier than 2023-04-18 08:00 | Knopp Lubomír | 8h | 2,400 |
| 100 | 9.7 | MS project aktualizace 7 |  | 1d | 2023-04-25 09:00 | 2023-04-25 18:00 |  | 4.03d |  | start no earlier than 2023-04-25 08:00 | Knopp Lubomír | 8h | 2,400 |
